# Quantum 2012 Management v0.2 08242012

Schedule from MS Project, 2012-03-01 to 2013-06-29, status date 2013-03-24, 2 hours a day, costs in $, A marks actual dates.

## Calendars

- Standard: Mon-Fri 08:00-12:00, 13:00-17:00; Sat-Sun off. Exceptions (off unless hours are given): 2012-06-02 08:00-12:00, 13:00-17:00, 2012-08-25 08:00-12:00, 13:00-17:00.

## Resources

| Resource | Group | Rate |
| --- | --- | --- |
| Quan Nguyen | PM | 1 |
| Dung Vu | TA | 1 |
| Tuan Nguyen | DEV | 1 |
| Dat Nguyen | DEV | 1 |
| Huy Trinh | DEV | 1 |
| Duy Anh | DEV | 1 |
| Thuy | DEV | 1 |
| Duy | DEV | 1 |

## Schedule

| ID | WBS | Task | Duration | Start | Finish | Predecessors | Complete | Remaining | Baseline start | Baseline finish | Baseline duration | Total slack | Free slack | Constraint | Resources | Work | Actual work | Cost | Baseline cost | Actual cost |
| --- | --- | --- | --- | --- | --- | --- | --- | --- | --- | --- | --- | --- | --- | --- | --- | --- | --- | --- | --- | --- |
| 1 | 1 | **Quantum Desktop Version** | 1396d? | 2012-03-01 A | 2013-06-29 |  | 53% | 656.21d? | 2012-03-01 | 2013-06-29 | 1396d? | 0d |  |  |  | 8718.6h | 1387.09h | 8,698.6 | 8,688.6 | 1,387.09 |
| 2 | 1.1 | **Quantum version 2.0** | 1396d? | 2012-03-01 A | 2013-06-29 |  | 32% | 950.47d? | 2012-03-01 | 2013-06-29 | 1396d? | 0d |  |  |  | 255.2h | 87.2h | 255.2 | 255.2 | 87.2 |
| 3 | 1.1.1 | Market Summary | 35d? | 2012-03-01 A | 2012-03-09 A |  | 100% |  | 2012-03-01 | 2012-03-09 | 35d? |  |  | finish no earlier than 2012-03-09 | Dung Vu; Tuan Nguyen [10%]; Quan Nguyen [40%] | 67.2h | 67.2h | 67.2 | 67.2 | 67.2 |
| 4 | 1.1.2 | Gán Strategy cho từng Stocks - liên quan đến Alerts | 64h | 2013-05-15 | 2013-06-01 | 3, 8, 25 |  |  | 2013-05-15 | 2013-06-01 | 64h | 0d |  |  | Quan Nguyen [50%]; Dung Vu | 48h |  | 48 | 48 |  |
| 5 | 1.1.3 | Custom Alerts | 96h | 2013-06-03 | 2013-06-29 | 4, 7 |  |  | 2013-06-03 | 2013-06-29 | 96h | 0d |  |  | Dung Vu; Quan Nguyen [50%] | 72h |  | 72 | 72 |  |
| 6 | 1.1.4 | Vẽ Chart Technical | 10d? | 2012-03-20 A | 2012-03-22 A | 5 | 100% |  | 2012-03-20 | 2012-03-22 | 10d? |  |  |  | Dung Vu | 20h | 20h | 20 | 20 | 20 |
| 7 | 1.1.5 | Stock Ranking - Mở rộng Category | 32h | 2013-05-15 | 2013-05-23 | 8, 25 |  |  | 2013-05-15 | 2013-05-23 | 32h | 28d | 24d |  | Dung Vu; Quan Nguyen; Tuan Nguyen | 48h |  | 48 | 48 |  |
| 8 | 1.2 | **Reporting & Email Module** | 956d? | 2012-06-18 A | 2013-05-15 |  | 57% | 410.73d? | 2012-06-18 | 2013-05-15 | 956d? | 0d |  |  |  | 8187.4h | 1085.89h | 8,167.4 | 8,167.4 | 1,085.89 |
| 9 | 1.2.1 | **Analysis** | 592d? | 2012-08-29 A | 2013-03-25 |  | 99% | 5.56d? | 2012-08-29 | 2013-03-25 | 592d? | 0d |  |  | Dung Vu [20%]; Quan Nguyen [10%]; Thuy; Duy Anh; Tuan Nguyen [30%] | 3843.6h | 904.69h | 3,843.6 | 3,843.6 | 904.69 |
| 10 | 1.2.1.1 | Phân tích report thị trường | 20h | 2012-08-29 A | 2012-08-31 A |  | 100% |  | 2012-08-29 | 2012-08-31 | 20h |  |  | finish no earlier than 2012-08-31 | Duy Anh; Thuy | 40h | 40h | 40 | 40 | 40 |
| 11 | 1.2.1.2 | Phân tích report kỹ thuật | 1d? | 2012-09-03 A | 2012-09-03 A | 10 | 100% |  | 2012-09-03 | 2012-09-03 | 1d? |  |  |  | Duy Anh; Thuy | 4h | 4h | 4 | 4 | 4 |
| 12 | 1.2.1.3 | Tạo các hàm để viết report | 200d? | 2013-01-12 A | 2013-03-23 A | 11 | 100% |  | 2013-01-12 | 2013-03-23 | 200d? |  |  |  | Duy Anh; Thuy | 800h | 800h | 800 | 800 | 800 |
| 13 | 1.2.1.4 | Mapping hàm report và hàm Webservices | 1d? | 2013-03-25 | 2013-03-25 | 12 |  |  | 2013-03-25 | 2013-03-25 | 1d? | 0d |  |  | Duy Anh; Thuy | 4h |  | 4 | 4 |  |
| 14 | 1.2.1.5 | Reports dành cho từng nhà đầu tư | 1d? | 2013-03-25 | 2013-03-25 | 13 |  |  | 2013-03-25 | 2013-03-25 | 1d? | 0d |  |  |  |  |  |  |  |  |
| 15 | 1.2.2 | **Design** | 10d | 2013-03-25 | 2013-03-27 |  |  |  | 2013-03-25 | 2013-03-27 | 10d | 0d |  |  | Thuy; Duy Anh; Tuan Nguyen [30%]; Dung Vu [20%]; Quan Nguyen [10%] | 70.4h |  | 50.4 | 50.4 |  |
| 16 | 1.2.2.1 | Thiết kế lớp xử lý Data | 20h | 2013-03-25 | 2013-03-27 | 14 |  |  | 2013-03-25 | 2013-03-27 | 20h | 0d |  |  |  | 20h |  |  |  |  |
| 17 | 1.2.3 | **Implementation** | 718d? | 2012-09-06 A | 2013-05-15 |  | 13% | 628.25d? | 2012-09-06 | 2013-05-15 | 718d? | 0d |  |  | Thuy; Duy Anh; Tuan Nguyen [30%]; Dung Vu [20%]; Quan Nguyen [10%] | 4193h | 181.2h | 4,193 | 4,193 | 181.2 |
| 18 | 1.2.3.1 | Parse File ở cấu trúc docx/doc | 80h? | 2012-09-06 A | 2013-04-03 | 16 | 50% | 40h? | 2012-09-06 | 2013-04-03 | 80h? | 0d |  | start no earlier than 2012-08-25 | Duy Anh; Thuy | 160h | 80h | 160 | 160 | 80 |
| 19 | 1.2.3.2 | Truyền tham số sang cho Report Data | 80h | 2013-04-04 | 2013-04-17 | 18 |  |  | 2013-04-04 | 2013-04-17 | 80h | 0d |  | start no earlier than 2012-08-25 | Duy Anh; Thuy | 160h |  | 160 | 160 |  |
| 20 | 1.2.3.3 | Tạo file docx, sử dụng OpenXML | 80h? | 2013-04-18 | 2013-05-01 | 19 |  |  | 2013-04-18 | 2013-05-01 | 80h? | 0d |  | start no earlier than 2012-08-25 | Duy Anh; Thuy | 160h |  | 160 | 160 |  |
| 21 | 1.2.3.4 | Xây dựng Mapping | 80h? | 2013-05-02 | 2013-05-15 | 20 |  |  | 2013-05-02 | 2013-05-15 | 80h? | 0d |  | start no earlier than 2012-08-25 | Dung Vu | 80h |  | 80 | 80 |  |
| 22 | 1.2.4 | **Testing** | 12d | 2012-08-27 | 2012-08-29 |  |  |  | 2012-08-27 | 2012-08-29 | 12d | 740d |  |  | Thuy; Duy Anh; Tuan Nguyen [30%]; Dung Vu [20%]; Quan Nguyen [10%] | 60.4h |  | 60.4 | 60.4 |  |
| 23 | 1.2.4.1 | Integration test | 24h | 2012-08-27 | 2012-08-29 |  |  |  | 2012-08-27 | 2012-08-29 | 24h | 740d |  |  |  |  |  |  |  |  |
| 24 | 1.2.5 | Integration với code | 20h | 2012-06-18 | 2012-06-20 |  |  |  | 2012-06-18 | 2012-06-20 | 20h | 946d |  | start no earlier than 2012-06-18 | Dung Vu | 20h |  | 20 | 20 |  |

Notes:
- 1: Proorities Orientation / - Định hướng phát triển các hŕm quan trọng / - Phát triển trước các hŕm có ảnh hưởng đến độ cảm nhận của khách hŕng / - Sửa các lỗi quan trong
- 14: report nŕy thông báo hŕng ngŕy / Nhŕ đầu tư[TENNHADAUTU] / Danh sách cổ phiếu sở hữu [LIST OF STOCKS] / Các tín hiệu mua bán lŕ [SIGNAL FOR LIST]

| ID | WBS | Task | Type | Duration | Start | Finish | Predecessors | Complete | Remaining | Baseline start | Baseline finish | Baseline duration | Total slack | Constraint | Deadline | Resources | Work | Actual work | Cost | Baseline cost | Actual cost |
| --- | --- | --- | --- | --- | --- | --- | --- | --- | --- | --- | --- | --- | --- | --- | --- | --- | --- | --- | --- | --- | --- |
| 25 | 1.3 | **Data Module** |  | 45d? | 2012-08-10 A | 2012-08-27 |  | 94% | 2.62d? | 2012-08-10 | 2012-08-27 | 45d? | 751d |  |  |  | 168h | 168h | 168 | 168 | 168 |
| 26 | 1.3.1 | Tổng kết về các Website | milestone | 0d? | 2012-08-24 A | 2012-08-24 A |  | 100% |  | 2012-08-24 | 2012-08-24 | 0d? |  | start no earlier than 2012-08-24 |  | Huy Trinh; Dat Nguyen; Quan Nguyen [10%]; Tuan Nguyen [10%]; Dung Vu [10%] |  |  |  |  |  |
| 27 | 1.3.2 | Đọc dữ liệu từ SSI |  | 40d? | 2012-08-10 A | 2012-08-24 A |  | 100% |  | 2012-08-10 | 2012-08-24 | 40d? |  | finish no earlier than 2012-08-24 |  | Dat Nguyen; Huy Trinh; Dung Vu [10%] | 168h | 168h | 168 | 168 | 168 |
| 28 | 1.3.3 | Tích hợp vào hệ thống |  | 1d? | 2012-08-27 A | 2012-08-27 |  | 50% | 0.5d? | 2012-08-27 | 2012-08-27 | 1d? | 751d |  |  |  |  |  |  |  |  |
| 29 | 1.3.4 | Document tổng hợp |  | 1d? | 2012-08-27 | 2012-08-27 |  |  |  | 2012-08-27 | 2012-08-27 | 1d? | 751d |  |  |  |  |  |  |  |  |
| 30 | 1.3.5 | Tích hợp Kitco |  | 1d? | 2012-08-27 | 2012-08-27 |  |  |  | 2012-08-27 | 2012-08-27 | 1d? | 751d |  |  |  |  |  |  |  |  |
| 31 | 1.4 | **Bug fix** |  | 250.5d? | 2012-06-01 A | 2012-08-25 |  | 49% | 127.48d? | 2012-06-01 | 2012-08-24 | 248d? | 881.5d |  |  |  | 96h | 46h | 96 | 86 | 46 |
| 32 | 1.4.1 | XP/2003 installation |  | 28d? | 2012-06-01 A | 2012-06-08 |  | 29% | 20d? | 2012-06-01 | 2012-06-08 | 28d? | 1104d | start no earlier than 2012-06-01 |  | Dung Vu | 56h | 16h | 56 | 56 | 16 |
| 33 | 1.4.2 | Data Correction for VNIndex |  | 13.71d? | 2012-06-12 A | 2012-06-15 A |  | 100% |  | 2012-06-12 | 2012-06-15 | 13.71d? |  | finish no earlier than 2012-06-15 |  | Dung Vu [9.4%]; Tuan Nguyen | 30h | 30h | 30 | 30 | 30 |
| 34 | 1.4.3 | Indicators và Chart |  | 2.5d? | 2012-08-25 | 2012-08-25 |  |  |  | 2012-08-24 | 2012-08-24 | 0d? | 881.5d | start no earlier than 2012-08-24 |  | Tuan Nguyen; Dung Vu | 10h |  | 10 |  |  |
| 35 | 1.5 | **Non Functional Requirement** |  | 237d? | 2012-06-06 | 2012-08-27 |  |  |  | 2012-06-06 | 2012-08-27 | 237d? | 879d |  |  |  | 12h |  | 12 | 12 |  |
| 36 | 1.5.1 | Webservices Optimisation |  | 4d? | 2012-06-06 | 2012-06-06 |  |  |  | 2012-06-06 | 2012-06-06 | 4d? | 1112d | start no earlier than 2012-06-06 |  | Dung Vu [50%]; Tuan Nguyen | 12h |  | 12 | 12 |  |
| 37 | 1.5.2 | Database Optimisation |  | 1d? | 2012-08-27 | 2012-08-27 |  |  |  | 2012-08-27 | 2012-08-27 | 1d? | 879d |  |  |  |  |  |  |  |  |
| 38 | 2 | **Documentation** |  | 100d? | 2012-08-03 A | 2012-09-06 |  | 96% | 3.98d? | 2012-08-03 | 2012-09-06 | 100d? | 844d |  |  |  | 674h | 530h | 506 | 506 | 506 |
| 39 | 2.1 | Requirement for Quantum Desktop v1.6 |  | 81d | 2012-08-06 A | 2012-08-25 A |  | 100% |  | 2012-08-06 | 2012-08-25 | 81d |  | start no earlier than 2012-08-03 |  | Quan Nguyen [304.8%]; Dung Vu [50%]; Tuan Nguyen [50%] | 256h | 256h | 256 | 256 | 256 |
| 40 | 2.2 | Requirement for Quantum Admin v0.6 |  | 0.5d? | 2012-08-27 A | 2012-08-27 A |  | 100% |  | 2012-08-27 | 2012-08-27 | 0.5d? |  |  |  | Quan Nguyen; Dung Vu [50%]; Tuan Nguyen [50%] | 2h | 2h | 2 | 2 | 2 |
| 41 | 2.3 | Quantum Database |  | 11d? | 2012-08-27 A | 2012-09-06 A |  | 100% |  | 2012-08-27 | 2012-09-06 | 11d? |  |  |  | Quan Nguyen [10%]; Dung Vu [50%]; Tuan Nguyen [50%] | 4h | 4h | 4 | 4 | 4 |
| 42 | 2.4 | Quantum Architecture |  | 1.5d? | 2012-08-27 A | 2012-08-27 A |  | 100% |  | 2012-08-27 | 2012-08-27 | 1.5d? |  |  |  | Quan Nguyen; Dung Vu [50%]; Tuan Nguyen [50%] | 4h | 4h | 4 | 4 | 4 |
| 43 | 2.5 | Quantum User Guide Tieng Viet |  | 42h | 2012-08-20 A | 2012-08-25 A |  | 100% |  | 2012-08-20 | 2012-08-25 | 42h |  | must finish on 2012-08-25 | 2012-08-27 | Quan Nguyen [400%]; Dung Vu [50%]; Tuan Nguyen [50%] | 80h | 80h | 80 | 80 | 80 |
| 44 | 2.6 | Quantum User Guide English 1.5 |  | 104h | 2012-08-03 A | 2012-08-17 A |  | 100% |  | 2012-08-03 | 2012-08-17 | 104h |  | finish no earlier than 2012-08-24 |  | Quan Nguyen [333.3%]; Dung Vu [50%]; Tuan Nguyen [50%] | 160h | 160h | 160 | 160 | 160 |
| 45 | 2.7 | Comment trong các module |  | 1d? | 2012-08-27 A | 2012-08-27 A |  | 100% |  | 2012-08-27 | 2012-08-27 | 1d? |  |  |  |  |  |  |  |  |  |
| 46 | 2.8 | **Video hướng dẫn sử dụng/ hướng dẫn đầu tư** |  | 4d? | 2012-08-27 | 2012-08-27 |  |  |  | 2012-08-27 | 2012-08-27 | 1d? | 875d |  |  |  | 120h |  |  |  |  |
| 47 | 2.8.1 | Video starts | milestone | 1d? | 2012-08-27 | 2012-08-27 |  |  |  |  |  |  | 875d |  |  |  |  |  |  |  |  |
| 48 | 2.8.2 | Mức độ 1 |  | 1d? | 2012-08-27 | 2012-08-27 | 47 |  |  | 2012-08-27 | 2012-08-27 | 1d? | 875d |  |  |  | 40h |  |  |  |  |
| 49 | 2.8.3 | Mức độ 2 |  | 1d? | 2012-08-27 | 2012-08-27 | 48 |  |  | 2012-08-27 | 2012-08-27 | 1d? | 875d |  |  |  | 40h |  |  |  |  |
| 50 | 2.8.4 | Mức độ 3 |  | 1d? | 2012-08-27 | 2012-08-27 | 49 |  |  | 2012-08-27 | 2012-08-27 | 1d? | 875d |  |  |  | 40h |  |  |  |  |

Notes:
- 32: sẽ để sau
- 44: Quantum 2012 User Guide v1.4 23082012

| ID | WBS | Task | Duration | Start | Finish | Predecessors | Complete | Remaining | Baseline start | Baseline finish | Baseline duration | Total slack | Free slack | Constraint | Resources | Work | Actual work | Cost | Baseline cost | Actual cost |
| --- | --- | --- | --- | --- | --- | --- | --- | --- | --- | --- | --- | --- | --- | --- | --- | --- | --- | --- | --- | --- |
| 51 | 2.9 | **Branding activities** | 1d? | 2012-08-27 A | 2012-08-27 |  | 33% | 0.67d? | 2012-08-27 | 2012-08-27 | 1d? | 879d |  |  |  | 48h | 24h |  |  |  |
| 52 | 2.9.1 | Logo | 1d? | 2012-08-27 A | 2012-08-27 A |  | 100% |  | 2012-08-27 | 2012-08-27 | 1d? |  |  |  |  | 24h | 24h |  |  |  |
| 53 | 2.9.2 | Bao bì phần mềm | 1d? | 2012-08-27 | 2012-08-27 |  |  |  | 2012-08-27 | 2012-08-27 | 1d? | 879d |  |  |  | 24h |  |  |  |  |
| 54 | 2.9.3 | lam CDs | 1d? | 2012-08-27 | 2012-08-27 |  |  |  |  |  |  | 879d |  |  |  |  |  |  |  |  |
| 55 | 3 | **Quantum Web** | 20d? | 2012-08-27 | 2012-08-31 |  |  |  | 2012-08-27 | 2012-08-31 | 20d? | 0d | 860d |  |  | 187.2h | 2.8h | 27.2 | 27.2 | 2.8 |
| 56 | 3.1 | **Web design by inside team** | 5d? | 2012-08-27 A | 2012-08-28 |  |  | 5d? | 2012-08-27 | 2012-08-28 | 5d? | 867d |  |  | Duy; Dung Vu [20%]; Tuan Nguyen [20%]; Quan Nguyen [20%] | 163.2h | 2.8h | 3.2 | 3.2 | 2.8 |
| 57 | 3.1.1 | Các chức năng trong phiên bản Web | 1d? | 2012-08-27 | 2012-08-27 |  |  |  | 2012-08-27 | 2012-08-27 | 1d? | 867d | 0d |  |  | 40h |  |  |  |  |
| 58 | 3.1.2 | Thiết kế màn hình Login/My Profile | 1d? | 2012-08-27 | 2012-08-27 | 57 |  |  | 2012-08-27 | 2012-08-27 | 1d? | 867d | 0d |  |  | 24h |  |  |  |  |
| 59 | 3.1.3 | Thiết kế màn hình chính | 1d? | 2012-08-27 | 2012-08-27 | 58 |  |  | 2012-08-27 | 2012-08-27 | 1d? | 867d | 0d |  |  | 48h |  |  |  |  |
| 60 | 3.1.4 | Thiết kế màn hình tư vấn | 1d? | 2012-08-27 | 2012-08-27 | 59 |  |  | 2012-08-27 | 2012-08-27 | 1d? | 867d | 0d |  |  | 24h |  |  |  |  |
| 61 | 3.1.5 | Thiết kế màn hình theo dõi Chart | 1d? | 2012-08-28 | 2012-08-28 | 60 |  |  | 2012-08-28 | 2012-08-28 | 1d? | 867d | 0d |  |  | 24h |  |  |  |  |
| 62 | 3.2 | Web approved by PM | 8d | 2012-08-28 | 2012-08-31 | 61 |  |  | 2012-08-28 | 2012-08-31 | 8d | 860d |  | start no earlier than 2012-06-06 | Dung Vu; Quan Nguyen; Tuan Nguyen | 24h |  | 24 | 24 |  |
| 63 | 4 | **Quantum Mobile (iOS, Android)** | 4d? | 2012-09-03 A | 2012-09-03 |  | 10% | 3.6d? | 2012-09-03 | 2012-09-03 | 4d? | 856d |  |  |  |  |  |  |  |  |
| 64 | 4.1 | Quantum Mobile draft design | 4d? | 2012-09-03 A | 2012-09-03 |  | 20% | 3.2d? | 2012-09-03 | 2012-09-03 | 4d? | 856d |  | start no earlier than 2012-09-03 |  |  |  |  |  |  |
| 65 | 4.2 | I phone approved by PM | 4d? | 2012-09-03 | 2012-09-03 |  |  |  | 2012-09-03 | 2012-09-03 | 4d? | 856d |  | start no earlier than 2012-09-03 |  |  |  |  |  |  |
